# Lire-Project

Schedule from MS Project, 2017-03-11 to 2017-06-23, A marks actual dates.

## Calendars

- 标准: Mon-Sun 08:00-12:00, 13:00-17:00.

## Resources

| Resource |
| --- |
| 刘少凡 |
| 宋昱材 |
| 黄飞 |
| 吴沂楠 |

## Schedule

| ID | WBS | Task | Type | Duration | Start | Finish | Predecessors | Complete | Baseline start | Baseline finish | Baseline duration | Baseline 1 start | Baseline 1 finish | Resources | Work | Actual work |
| --- | --- | --- | --- | --- | --- | --- | --- | --- | --- | --- | --- | --- | --- | --- | --- | --- |
| 1 | 1 | **软件项目计划** |  | 7d | 2017-03-11 A | 2017-03-17 A |  | 100% | 2017-03-11 | 2017-03-17 | 7d | 2017-03-11 | 2017-03-17 |  | 44.61h | 44.61h |
| 2 | 1.1 | 开会确定项目 | manual | 1d | 2017-03-11 A | 2017-03-11 A |  | 100% | 2017-03-11 | 2017-03-11 | 1d | 2017-03-11 | 2017-03-11 | 黄飞 [13%]; 刘少凡 [13%]; 宋昱材 [13%]; 吴沂楠 [13%] | 4.16h | 4.16h |
| 3 | 1.2 | 搜集整理资料 | manual | 2d | 2017-03-12 A | 2017-03-13 A |  | 100% | 2017-03-12 | 2017-03-13 | 2d |  |  | 吴沂楠 [6%]; 黄飞 [13%]; 刘少凡 [6%]; 宋昱材 [19%] | 7.04h | 7.04h |
| 4 | 1.3 | 开会讨论项目计划 | manual | 1d | 2017-03-13 A | 2017-03-13 A | 2, 3 | 100% | 2017-03-13 | 2017-03-13 | 1d | 2017-03-13 | 2017-03-13 | 黄飞 [13%]; 刘少凡 [13%]; 宋昱材 [13%]; 吴沂楠 [13%] | 4.16h | 4.16h |
| 5 | 1.4 | 整理总结会议记录 | manual | 3d | 2017-03-14 A | 2017-03-16 A | 2, 4 | 100% | 2017-03-14 | 2017-03-16 | 3d | 2017-03-14 | 2017-03-16 | 吴沂楠 [4%] | 0.99h | 0.99h |
| 6 | 1.5 | 撰写项目计划书 | manual | 3d | 2017-03-14 A | 2017-03-16 A | 4 | 100% | 2017-03-14 | 2017-03-16 | 3d | 2017-03-14 | 2017-03-16 | 黄飞 [8%]; 宋昱材 [8%] | 3.94h | 3.94h |
| 7 | 1.6 | 项目介绍PPT | manual | 1d | 2017-03-16 A | 2017-03-16 A | 6 | 100% | 2017-03-16 | 2017-03-16 | 1d | 2017-03-16 | 2017-03-16 | 刘少凡 [13%] | 1.04h | 1.04h |
| 8 | 1.7 | 提交内容的自我审查与修改 | manual | 1d | 2017-03-17 A | 2017-03-17 A | 6 | 100% | 2017-03-17 | 2017-03-17 | 1d | 2017-03-17 | 2017-03-17 | 刘少凡 [13%]; 黄飞 [13%]; 宋昱材 [13%]; 吴沂楠 [13%] | 4.16h | 4.16h |
| 9 | 1.8 | 课上展示以及问题交流 | manual | 1d | 2017-03-17 A | 2017-03-17 A | 7 | 100% | 2017-03-17 | 2017-03-17 | 1d |  |  | 黄飞 [13%]; 刘少凡 [13%]; 宋昱材 [13%]; 吴沂楠 [13%] | 4.16h | 4.16h |
| 10 | 1.9 | **调研与学习** |  | 5d | 2017-03-12 A | 2017-03-16 A |  | 100% | 2017-03-12 | 2017-03-16 | 5d |  |  |  | 14.96h | 14.96h |
| 11 | 1.9.1 | 分析Lire包 | manual | 5d | 2017-03-12 A | 2017-03-16 A |  | 100% | 2017-03-12 | 2017-03-16 | 5d |  |  | 宋昱材 [8%] | 3.2h | 3.2h |
| 12 | 1.9.2 | 学习Lire使用 | manual | 5d | 2017-03-12 A | 2017-03-16 A |  | 100% | 2017-03-12 | 2017-03-16 | 5d |  |  | 吴沂楠 [8%] | 3.2h | 3.2h |
| 13 | 1.9.3 | 调研往届项目计划书与计划mpp文件内容格式 | manual | 2d | 2017-03-12 A | 2017-03-13 A |  | 100% | 2017-03-12 | 2017-03-13 | 2d |  |  | 刘少凡 [6%] | 0.96h | 0.96h |
| 14 | 1.9.4 | 学习Project使用 | manual | 5d | 2017-03-12 A | 2017-03-16 A |  | 100% | 2017-03-12 | 2017-03-16 | 5d |  |  | 刘少凡 [3%] | 1.2h | 1.2h |
| 15 | 1.9.5 | 学习Git使用 | manual | 5d | 2017-03-12 A | 2017-03-16 A |  | 100% | 2017-03-12 | 2017-03-16 | 5d |  |  | 刘少凡 [3%]; 吴沂楠 [5%] | 3.2h | 3.2h |
| 16 | 1.9.6 | 学习相关Lire资料，调研往届项目计划书格式 | manual | 5d | 2017-03-12 A | 2017-03-16 A |  | 100% | 2017-03-12 | 2017-03-16 | 5d |  |  | 黄飞 [8%] | 3.2h | 3.2h |
| 17 | 2 | **软件需求分析** |  | 14d | 2017-03-18 A | 2017-03-31 A |  | 100% | 2017-03-18 | 2017-03-31 | 14d | 2017-03-18 | 2017-03-31 |  | 97.04h | 97.04h |
| 18 | 2.1 | 开会讨论评审和修改内容，以及着重讨论了实验6~8如何做 | manual | 1d | 2017-03-18 A | 2017-03-18 A |  | 100% | 2017-03-18 | 2017-03-18 | 1d | 2017-03-18 | 2017-03-18 | 黄飞 [13%]; 刘少凡 [13%]; 宋昱材 [13%]; 吴沂楠 [13%] | 4.16h | 4.16h |
| 19 | 2.2 | 评审C、D组上周发布内容 | manual | 1d | 2017-03-18 A | 2017-03-18 A |  | 100% | 2017-03-18 | 2017-03-18 | 1d |  |  | 黄飞 [25%]; 刘少凡 [13%]; 宋昱材 [25%]; 吴沂楠 [13%] | 6.08h | 6.08h |
| 20 | 2.3 | 根据其他组的评审意见撰写第2周问题清单 | manual | 1d | 2017-03-19 A | 2017-03-19 A |  | 100% | 2017-03-19 | 2017-03-19 | 1d |  |  | 黄飞 [25%] | 2h | 2h |
| 21 | 2.4 | 开会讨论需求说明书编写相关内容 | manual | 0.13d | 2017-03-19 A | 2017-03-19 A |  | 100% | 2017-03-19 | 2017-03-19 | 1d | 2017-03-19 | 2017-03-19 | 黄飞 [13%]; 刘少凡 [13%]; 宋昱材 [13%]; 吴沂楠 [13%] | 4.16h | 4.16h |
| 22 | 2.5 | 依据评审意见修改部分文档 | manual | 1d | 2017-03-20 A | 2017-03-20 A |  | 100% | 2017-03-20 | 2017-03-20 | 1d | 2017-03-20 | 2017-03-20 | 刘少凡 [25%] | 2h | 2h |
| 23 | 2.6 | 整理总结会议记录 | manual | 0.13d | 2017-03-20 A | 2017-03-20 A | 18, 21 | 100% | 2017-03-20 | 2017-03-20 | 1d | 2017-03-20 | 2017-03-20 | 吴沂楠 [13%] | 1.04h | 1.04h |
| 24 | 2.7 | 撰写需求规格说明书初稿 | manual | 5d | 2017-03-19 A | 2017-03-23 A | 21 | 100% | 2017-03-19 | 2017-03-23 | 5d | 2017-03-19 | 2017-03-24 | 黄飞 [5%]; 刘少凡 [5%]; 宋昱材 [18%]; 吴沂楠 [5%] | 13.2h | 13.2h |
| 25 | 2.8 | 组内审核修改需求规格说明书 | manual | 1d | 2017-03-24 A | 2017-03-24 A |  | 100% | 2017-03-24 | 2017-03-24 | 1d |  |  | 黄飞 [13%]; 刘少凡 [6%]; 宋昱材 [6%]; 吴沂楠 [6%] | 2.48h | 2.48h |
| 26 | 2.9 | 项目需求规格说明PPT | manual | 1d | 2017-03-24 A | 2017-03-24 A |  | 100% | 2017-03-24 | 2017-03-24 | 1d | 2017-03-24 | 2017-03-24 | 刘少凡 [13%] | 1.04h | 1.04h |
| 27 | 2.10 | 课上展示以及问题交流 | manual | 1d | 2017-03-24 A | 2017-03-24 A | 26 | 100% | 2017-03-24 | 2017-03-24 | 1d |  |  | 黄飞 [13%]; 刘少凡 [13%]; 宋昱材 [13%]; 吴沂楠 [13%] | 4.16h | 4.16h |

| ID | WBS | Task | Type | Duration | Start | Finish | Predecessors | Complete | Baseline start | Baseline finish | Baseline duration | Baseline 1 start | Baseline 1 finish | Resources | Work | Actual work |
| --- | --- | --- | --- | --- | --- | --- | --- | --- | --- | --- | --- | --- | --- | --- | --- | --- |
| 28 | 2.11 | **调研与学习** |  | 5d | 2017-03-19 A | 2017-03-23 A |  | 100% | 2017-03-19 | 2017-03-23 | 5d |  |  |  | 22.4h | 22.4h |
| 29 | 2.11.1 | 学习RUCM模型的编写 | manual | 5d | 2017-03-19 A | 2017-03-23 A |  | 100% | 2017-03-19 | 2017-03-23 | 5d |  |  | 刘少凡 [5%]; 吴沂楠 [8%] | 5.2h | 5.2h |
| 30 | 2.11.2 | 学习RUCM软件的使用 | manual | 5d | 2017-03-19 A | 2017-03-23 A |  | 100% | 2017-03-19 | 2017-03-23 | 5d |  |  | 刘少凡 [3%]; 吴沂楠 [5%] | 3.2h | 3.2h |
| 31 | 2.11.3 | 阅读Lire源码 | manual | 5d | 2017-03-19 A | 2017-03-23 A |  | 100% | 2017-03-19 | 2017-03-23 | 5d |  |  | 吴沂楠 [13%]; 刘少凡 [5%] | 7.2h | 7.2h |
| 32 | 2.11.4 | 进一步学习Lire的具体功能，调研往届的需求规格说明书 | manual | 5d | 2017-03-19 A | 2017-03-23 A |  | 100% | 2017-03-19 | 2017-03-23 | 5d |  |  | 黄飞 [8%] | 3.2h | 3.2h |
| 33 | 2.11.5 | 调研往届配置管理总结文档内容与格式 | manual | 5d | 2017-03-19 A | 2017-03-23 A |  | 100% | 2017-03-19 | 2017-03-23 | 5d |  |  | 刘少凡 [3%] | 1.2h | 1.2h |
| 34 | 2.11.6 | 调研往届工作量统计分析文档内容与格式 | manual | 5d | 2017-03-19 A | 2017-03-23 A |  | 100% | 2017-03-19 | 2017-03-23 | 5d |  |  | 刘少凡 [3%] | 1.2h | 1.2h |
| 35 | 2.11.7 | 调研往届需求说明书内容与格式 | manual | 5d | 2017-03-19 A | 2017-03-23 A |  | 100% | 2017-03-19 | 2017-03-23 | 5d |  |  | 刘少凡 [3%] | 1.2h | 1.2h |
| 36 | 2.12 | 开会讨论修改需求说明书与评审单的制定 | manual | 1d | 2017-03-26 A | 2017-03-26 A |  | 100% | 2017-03-26 | 2017-03-26 | 1d | 2017-03-26 | 2017-03-26 | 黄飞 [13%]; 刘少凡 [13%]; 宋昱材 [13%]; 吴沂楠 [13%] | 4.16h | 4.16h |
| 37 | 2.13 | 修改需求规格说明书v1.1 | manual | 2d | 2017-03-27 A | 2017-03-28 A | 36 | 100% | 2017-03-27 | 2017-03-28 | 2d | 2017-03-27 | 2017-03-28 | 刘少凡 [13%] | 2.08h | 2.08h |
| 38 | 2.14 | 制作评审单 | manual | 2d | 2017-03-27 A | 2017-03-28 A | 36 | 100% | 2017-03-27 | 2017-03-28 | 2d | 2017-03-27 | 2017-03-28 | 黄飞 [13%] | 2.08h | 2.08h |
| 39 | 2.15 | 评审C、D组需求说明书 | manual | 1d | 2017-03-29 A | 2017-03-29 A | 38 | 100% | 2017-03-29 | 2017-03-29 | 1d |  |  | 黄飞 [25%]; 刘少凡 [13%]; 宋昱材 [25%]; 吴沂楠 [13%] | 6.08h | 6.08h |
| 40 | 2.16 | 依据E、F组评审撰写问题清单 | manual | 1d | 2017-03-30 A | 2017-03-30 A |  | 100% | 2017-03-30 | 2017-03-30 | 1d | 2017-03-30 | 2017-03-30 | 黄飞 [25%] | 2h | 2h |
| 41 | 2.17 | 依据E、F组评审修改需求规格说明书 | manual | 1d | 2017-03-30 A | 2017-03-30 A |  | 100% | 2017-03-30 | 2017-03-30 | 1d | 2017-03-30 | 2017-03-30 | 刘少凡 [13%] | 1.04h | 1.04h |
| 42 | 2.18 | 依据老师批注修改需求规格说明书 | manual | 1d | 2017-03-31 A | 2017-03-31 A |  | 100% | 2017-03-31 | 2017-03-31 | 1d | 2017-03-31 | 2017-03-31 | 吴沂楠 [13%] | 1.04h | 1.04h |
| 43 | 2.19 | 更新会议记录 | manual | 1d | 2017-03-31 A | 2017-03-31 A | 36 | 100% | 2017-03-31 | 2017-03-31 | 1d | 2017-03-31 | 2017-03-31 | 吴沂楠 [13%] | 1.04h | 1.04h |
| 44 | 2.20 | 制作PPT | manual | 0.15d | 2017-03-31 A | 2017-03-31 A | 41 | 100% | 2017-03-31 | 2017-03-31 | 1d | 2017-03-31 | 2017-03-31 | 刘少凡 [7%]; 吴沂楠 [6%] | 1.04h | 1.04h |
| 45 | 2.21 | 课上展示以及问题交流 | manual | 1d | 2017-03-31 A | 2017-03-31 A | 44 | 100% | 2017-03-31 | 2017-03-31 | 1d |  |  | 黄飞 [13%]; 刘少凡 [13%]; 宋昱材 [13%]; 吴沂楠 [13%] | 4.16h | 4.16h |
| 46 | 2.22 | **调研与学习** |  | 5d | 2017-03-26 A | 2017-03-30 A |  | 100% | 2017-03-26 | 2017-03-30 | 5d |  |  |  | 9.6h | 9.6h |
| 47 | 2.22.1 | 调研往届需求规格说明评审单格式 | manual | 5d | 2017-03-26 A | 2017-03-30 A |  | 100% | 2017-03-26 | 2017-03-30 | 5d |  |  | 黄飞 [5%]; 吴沂楠 [3%] | 3.2h | 3.2h |
| 48 | 2.22.2 | 调研业务需求如何写 | manual | 5d | 2017-03-26 A | 2017-03-30 A |  | 100% | 2017-03-26 | 2017-03-30 | 5d |  |  | 刘少凡 [3%] | 1.2h | 1.2h |
| 49 | 2.22.3 | 阅读Lire源码 | manual | 5d | 2017-03-26 A | 2017-03-30 A |  | 100% | 2017-03-26 | 2017-03-30 | 5d |  |  | 刘少凡 [5%] | 2h | 2h |
| 50 | 2.22.4 | 查阅、学习需求评审的相关知识 | manual | 5d | 2017-03-26 A | 2017-03-30 A |  | 100% | 2017-03-26 | 2017-03-30 | 5d |  |  | 宋昱材 [5%] | 2h | 2h |
| 51 | 2.22.5 | 阅读往届需求说明书 | manual | 5d | 2017-03-26 A | 2017-03-30 A |  | 100% | 2017-03-26 | 2017-03-30 | 1d |  |  | 吴沂楠 [3%] | 1.2h | 1.2h |

| ID | WBS | Task | Type | Duration | Start | Finish | Predecessors | Complete | Actual finish | Baseline start | Baseline finish | Baseline duration | Baseline 1 start | Baseline 1 finish | Resources | Work | Actual work |
| --- | --- | --- | --- | --- | --- | --- | --- | --- | --- | --- | --- | --- | --- | --- | --- | --- | --- |
| 52 | 3 | **软件需求评审** |  | 7d | 2017-04-01 A | 2017-04-07 A |  | 100% |  | 2017-04-01 | 2017-04-07 | 7d | 2017-04-01 | 2017-04-07 |  | 41.28h | 41.28h |
| 53 | 3.1 | 研究制作会议大纲 | manual | 1d | 2017-04-01 A | 2017-04-01 A |  | 100% |  | 2017-04-01 | 2017-04-01 | 1d |  |  | 刘少凡 [13%] | 1.04h | 1.04h |
| 54 | 3.2 | 开会讨论需求说明书修改相关问题 | manual | 0.19d | 2017-04-01 A | 2017-04-01 A | 53 | 100% |  | 2017-04-01 | 2017-04-01 | 1d | 2017-04-01 | 2017-04-01 | 黄飞 [19%]; 刘少凡 [19%]; 宋昱材 [19%]; 吴沂楠 [19%] | 6.08h | 6.08h |
| 55 | 3.3 | 修改需求说明书2.0 | manual | 3.98d | 2017-04-02 A | 2017-04-05 A | 54 | 100% |  | 2017-04-02 | 2017-04-05 | 4d | 2017-04-02 | 2017-04-05 | 黄飞 [14%]; 刘少凡 [14%]; 宋昱材 [15%]; 吴沂楠 [15%] | 18.56h | 18.56h |
| 56 | 3.4 | 更新会议记录 | manual | 1d | 2017-04-07 A | 2017-04-07 A | 54 | 100% |  | 2017-04-07 | 2017-04-07 | 1d | 2017-04-07 | 2017-04-07 | 吴沂楠 [13%] | 1.04h | 1.04h |
| 57 | 3.5 | 制作PPT | manual | 1d | 2017-04-07 A | 2017-04-07 A |  | 100% |  | 2017-04-07 | 2017-04-07 | 1d | 2017-04-07 | 2017-04-07 | 黄飞 [25%] | 2h | 2h |
| 58 | 3.6 | 课上展示以及问题交流 | manual | 0.13d | 2017-04-07 A | 2017-04-07 A | 57 | 100% |  | 2017-04-07 | 2017-04-07 | 1d |  |  | 黄飞 [13%]; 刘少凡 [13%]; 宋昱材 [13%]; 吴沂楠 [13%] | 4.16h | 4.16h |
| 59 | 3.7 | **调研与学习** |  | 5d | 2017-04-02 A | 2017-04-06 A |  | 100% |  | 2017-04-02 | 2017-04-06 | 5d |  |  |  | 8.4h | 8.4h |
| 60 | 3.7.1 | 调研业务需求相关知识 | manual | 5d | 2017-04-02 A | 2017-04-06 A |  | 100% |  | 2017-04-02 | 2017-04-06 | 5d |  |  | 宋昱材 [8%] | 3.2h | 3.2h |
| 61 | 3.7.2 | 阅读Lire源码 | manual | 5d | 2017-04-02 A | 2017-04-06 A |  | 100% |  | 2017-04-02 | 2017-04-06 | 5d |  |  | 刘少凡 [5%] | 2h | 2h |
| 62 | 3.7.3 | 进一步研究Lire的非需求说明 | manual | 5d | 2017-04-02 A | 2017-04-06 A |  | 100% |  | 2017-04-02 | 2017-04-06 | 5d |  |  | 黄飞 [8%] | 3.2h | 3.2h |
| 63 | 4 | **软件需求复评审** |  | 7d | 2017-04-08 A | 2017-04-14 |  | 100% | 2017-04-21 | 2017-04-08 | 2017-04-21 | 14d | 2017-04-08 | 2017-04-14 |  | 55.36h | 55.36h |
| 64 | 4.1 | 开会讨论 | manual | 0.13d | 2017-04-08 A | 2017-04-08 A |  | 100% |  | 2017-04-08 | 2017-04-08 | 1d |  |  | 黄飞 [13%]; 刘少凡 [13%]; 宋昱材 [13%]; 吴沂楠 [13%] | 4.16h | 4.16h |
| 65 | 4.2 | 评审C\D组需求说明书 | manual | 2d | 2017-04-08 A | 2017-04-09 A |  | 100% |  | 2017-04-08 | 2017-04-09 | 2d |  |  | 黄飞 [13%]; 刘少凡 [9%]; 宋昱材 [13%]; 吴沂楠 [9%] | 7.04h | 7.04h |
| 66 | 4.3 | 修改需求说明书2.1 | manual | 4d | 2017-04-10 A | 2017-04-13 A | 65 | 100% |  | 2017-04-10 | 2017-04-14 | 5d |  |  | 黄飞 [6%]; 刘少凡 [3%]; 宋昱材 [2%] | 3.52h | 3.52h |
| 67 | 4.4 | 更新会议记录 | manual | 5d | 2017-04-09 A | 2017-04-13 A | 64 | 100% |  | 2017-04-09 | 2017-04-14 | 6d |  |  | 吴沂楠 [1%] | 0.4h | 0.4h |
| 68 | 4.5 | 制作PPT | manual | 1d | 2017-04-13 A | 2017-04-13 A |  | 100% |  | 2017-04-14 | 2017-04-14 | 1d |  |  | 刘少凡 [6%] | 0.48h | 0.48h |
| 69 | 4.6 | 课上展示以及问题交流 | manual | 1d | 2017-04-14 A | 2017-04-14 A | 68 | 100% |  | 2017-04-14 | 2017-04-14 | 1d |  |  | 黄飞 [13%]; 刘少凡 [13%]; 宋昱材 [13%]; 吴沂楠 [13%] | 4.16h | 4.16h |
| 70 | 4.7 | **调研与学习** |  | 5d | 2017-04-09 A | 2017-04-13 A |  | 100% |  | 2017-04-09 | 2017-04-13 | 5d |  |  |  | 7.2h | 7.2h |
| 71 | 4.7.1 | 学习绘制RUCM图并搭建绘制RUCM图的环境 | manual | 5d | 2017-04-09 A | 2017-04-13 A |  | 100% |  | 2017-04-09 | 2017-04-13 | 5d |  |  | 黄飞 [8%] | 3.2h | 3.2h |
| 72 | 4.7.2 | 调研工作量统计的相关知识 | manual | 5d | 2017-04-09 A | 2017-04-13 A |  | 100% |  | 2017-04-09 | 2017-04-13 | 5d |  |  | 宋昱材 [5%] | 2h | 2h |
| 73 | 4.7.3 | 学习往届配置管理文档的编写 | manual | 5d | 2017-04-09 A | 2017-04-13 A |  | 100% |  | 2017-04-09 | 2017-04-13 | 5d |  |  | 吴沂楠 [5%] | 2h | 2h |
| 74 | 4.8 | 开会 | manual | 1d | 2017-04-16 A | 2017-04-16 A |  | 100% |  | 2017-04-16 | 2017-04-16 | 1d |  |  | 黄飞 [19%]; 刘少凡 [19%]; 宋昱材 [19%]; 吴沂楠 [19%] | 6.08h | 6.08h |
| 75 | 4.9 | 修改需求说明书3.0 | manual | 5d | 2017-04-16 A | 2017-04-20 A |  | 100% |  | 2017-04-16 | 2017-04-20 | 5d |  |  | 宋昱材 [8%] | 3.2h | 3.2h |
| 76 | 4.10 | 更新会议记录 | manual | 5d | 2017-04-16 A | 2017-04-20 A | 74 | 100% |  | 2017-04-17 | 2017-04-21 | 5d |  |  | 吴沂楠 [3%] | 1.2h | 1.2h |
| 77 | 4.11 | 制作PPT | manual | 1d | 2017-04-21 A | 2017-04-21 A |  | 100% |  | 2017-04-21 | 2017-04-21 | 1d |  |  | 刘少凡 [6%]; 黄飞 [13%] | 1.52h | 1.52h |
| 78 | 4.12 | 课上展示以及问题交流 | manual | 1d | 2017-04-21 A | 2017-04-21 A |  | 100% |  | 2017-04-21 | 2017-04-21 | 1d |  |  | 黄飞 [25%]; 刘少凡 [25%]; 宋昱材 [25%]; 吴沂楠 [25%] | 8h | 8h |

| ID | WBS | Task | Type | Duration | Start | Finish | Predecessors | Complete | Remaining | Baseline start | Baseline finish | Baseline duration | Baseline 1 start | Baseline 1 finish | Resources | Work | Actual work |
| --- | --- | --- | --- | --- | --- | --- | --- | --- | --- | --- | --- | --- | --- | --- | --- | --- | --- |
| 79 | 4.13 | **调研与学习** |  | 5d | 2017-04-16 A | 2017-04-20 A |  | 100% |  | 2017-04-16 | 2017-04-20 | 5d |  |  |  | 8.4h | 8.4h |
| 80 | 4.13.1 | 调研深度学习框架和CNN模型 | manual | 5d | 2017-04-16 A | 2017-04-20 A |  | 100% |  | 2017-04-16 | 2017-04-20 | 5d |  |  | 宋昱材 [8%] | 3.2h | 3.2h |
| 81 | 4.13.2 | 调研Java的JNI机制 | manual | 5d | 2017-04-16 A | 2017-04-20 A |  | 100% |  | 2017-04-16 | 2017-04-20 | 5d |  |  | 宋昱材 [8%] | 3.2h | 3.2h |
| 82 | 4.13.3 | 调研实验八的格式和相关内容 | manual | 5d | 2017-04-16 A | 2017-04-20 A |  | 100% |  | 2017-04-16 | 2017-04-20 | 5d |  |  | 黄飞 [5%] | 2h | 2h |
| 83 | 5 | **软件产品改进与展示** |  | 28d | 2017-04-15 A | 2017-05-12 |  | 90% | 2.73d | 2017-04-21 | 2017-05-12 | 21d | 2017-04-15 | 2017-05-12 |  | 102.48h | 84.88h |
| 84 | 5.1 | 开会 | manual | 1d | 2017-04-22 A | 2017-04-22 A |  | 100% |  | 2017-04-22 | 2017-04-22 | 1d |  |  | 黄飞 [19%]; 刘少凡 [19%]; 宋昱材 [19%]; 吴沂楠 [19%] | 6.08h | 6.08h |
| 85 | 5.2 | 阶段性计划工时与实际工时对比分析 | manual | 5d | 2017-04-23 A | 2017-04-27 A |  | 100% |  | 2017-04-23 | 2017-04-27 | 5d |  |  | 刘少凡 [8%] | 3.2h | 3.2h |
| 86 | 5.3 | 阶段性需求修改与问题报告的关系分析 | manual | 3d | 2017-04-26 A | 2017-04-28 A |  | 100% |  | 2017-04-26 | 2017-04-28 | 3d |  |  | 黄飞 [8%] | 1.92h | 1.92h |
| 87 | 5.4 | 更新原始项目计划书 | manual | 2d | 2017-04-22 A | 2017-04-23 A |  | 100% |  | 2017-04-22 | 2017-04-23 | 2d |  |  | 刘少凡 [6%] | 0.96h | 0.96h |
| 88 | 5.5 | 修改需求说明书3.1 | manual | 2d | 2017-04-22 A | 2017-04-23 A |  | 100% |  | 2017-04-22 | 2017-04-23 | 2d |  |  | 黄飞 [9%]; 宋昱材 [6%] | 2.4h | 2.4h |
| 89 | 5.6 | 评审C、D组需求说明书 | manual | 2d | 2017-04-24 A | 2017-04-25 A |  | 100% |  | 2017-04-24 | 2017-04-25 | 2d |  |  | 黄飞 [13%]; 刘少凡 [13%]; 宋昱材 [13%]; 吴沂楠 [13%] | 8.32h | 8.32h |
| 90 | 5.7 | 汇总问题清单 | manual | 1d | 2017-04-26 A | 2017-04-26 A | 89 | 100% |  | 2017-04-26 | 2017-04-26 | 1d |  |  | 刘少凡 [13%] | 1.04h | 1.04h |
| 91 | 5.8 | 修改需求说明书3.2 | manual | 2d | 2017-04-26 A | 2017-04-27 A | 90 | 100% |  | 2017-04-26 | 2017-04-27 | 2d |  |  | 黄飞 [6%]; 刘少凡 [9%] | 2.4h | 2.4h |
| 92 | 5.9 | 详细方案设计撰写说明书 | manual | 5d | 2017-04-23 A | 2017-04-27 A |  | 100% |  | 2017-04-23 | 2017-04-27 | 5d |  |  | 宋昱材 [10%] | 4h | 4h |
| 93 | 5.10 | 更新会议记录 | manual | 1d | 2017-04-28 A | 2017-04-28 A | 84 | 100% |  | 2017-04-28 | 2017-04-28 | 1d |  |  | 吴沂楠 [13%] | 1.04h | 1.04h |
| 94 | 5.11 | 制作PPT | manual | 1d | 2017-04-28 A | 2017-04-28 A | 92 | 100% |  | 2017-04-28 | 2017-04-28 | 1d |  |  | 黄飞 [9%] | 0.72h | 0.72h |
| 95 | 5.12 | 课上展示以及问题交流 | manual | 1d | 2017-04-28 A | 2017-04-28 A |  | 100% |  | 2017-04-28 | 2017-04-28 | 1d |  |  | 黄飞 [13%]; 刘少凡 [13%]; 宋昱材 [13%]; 吴沂楠 [13%] | 4.16h | 4.16h |
| 96 | 5.13 | **调研与学习** |  | 5d | 2017-04-23 A | 2017-04-27 A |  | 100% |  | 2017-04-23 | 2017-04-27 | 5d |  |  |  | 3.2h | 3.2h |
| 97 | 5.13.1 | 调研产品改进与展示相关问题 | manual | 5d | 2017-04-23 A | 2017-04-27 A |  | 100% |  | 2017-04-23 | 2017-04-27 | 5d |  |  | 宋昱材 [8%] | 3.2h | 3.2h |
| 98 | 5.14 | 开会讨论实验阶段进度与分工 | manual | 1d | 2017-04-29 A | 2017-04-29 A |  | 100% |  | 2017-04-29 | 2017-04-29 | 1d |  |  | 黄飞 [19%]; 刘少凡 [19%]; 宋昱材 [19%]; 吴沂楠 [19%] | 6.08h | 6.08h |
| 99 | 5.15 | 总结分析老师批注内容 | manual | 1d | 2017-05-02 A | 2017-05-02 A |  | 100% |  | 2017-05-02 | 2017-05-02 | 1d |  |  | 刘少凡 [25%] | 2h | 2h |
| 100 | 5.16 | 开会讨论需求说明书修改问题 | manual | 1d | 2017-05-02 A | 2017-05-02 A |  | 100% |  | 2017-05-02 | 2017-05-02 | 1d |  |  | 黄飞 [13%]; 刘少凡 [13%]; 宋昱材 [13%]; 吴沂楠 [13%] | 4.16h | 4.16h |
| 101 | 5.17 | 完成继承LireFeature接口的CNN类的部分具体方法编写 | manual | 5d | 2017-04-30 A | 2017-05-04 A |  | 100% |  | 2017-04-30 | 2017-05-04 | 5d |  |  | 黄飞 [10%]; 刘少凡 [10%] | 8h | 8h |
| 102 | 5.18 | 修改需求说明书 | manual | 3d | 2017-05-03 A | 2017-05-05 A |  | 100% |  | 2017-05-03 | 2017-05-05 | 3d |  |  | 刘少凡 [8%] | 1.92h | 1.92h |
| 103 | 5.19 | 安装配置caffe | manual | 5d | 2017-04-30 A | 2017-05-04 A |  | 100% |  | 2017-04-30 | 2017-05-04 | 5d |  |  | 宋昱材 [13%] | 5.2h | 5.2h |
| 104 | 5.20 | 更新实现阶段说明书 | manual | 5d | 2017-04-30 A | 2017-05-04 A |  | 100% |  | 2017-04-30 | 2017-05-04 | 5d |  |  | 宋昱材 [10%] | 4h | 4h |
| 105 | 5.21 | 写界面 | manual | 5d | 2017-04-30 A | 2017-05-04 A |  | 100% |  | 2017-04-30 | 2017-05-04 | 5d |  |  | 吴沂楠 [10%] | 4h | 4h |
| 106 | 5.22 | 更新会议记录 | manual | 1d | 2017-05-05 A | 2017-05-05 A | 98, 100 | 100% |  | 2017-05-05 | 2017-05-05 | 1d |  |  | 吴沂楠 [13%] | 1.04h | 1.04h |
| 107 | 5.23 | 制作PPT | manual | 1d | 2017-05-05 A | 2017-05-05 A |  | 100% |  | 2017-05-05 | 2017-05-05 | 1d |  |  | 黄飞 [13%] | 1.04h | 1.04h |
| 108 | 5.24 | 课上展示以及问题交流 | manual | 1d | 2017-04-15 | 2017-04-15 |  |  |  | 2017-05-05 | 2017-05-06 | 1d |  |  | 黄飞 [13%]; 刘少凡 [13%]; 宋昱材 [13%]; 吴沂楠 [13%] | 4.16h |  |

| ID | WBS | Task | Type | Duration | Start | Finish | Predecessors | Complete | Baseline start | Baseline finish | Baseline duration | Baseline 1 start | Baseline 1 finish | Resources | Work | Actual work |
| --- | --- | --- | --- | --- | --- | --- | --- | --- | --- | --- | --- | --- | --- | --- | --- | --- |
| 109 | 5.25 | **调研与学习** |  | 5d | 2017-04-30 A | 2017-05-04 A |  | 100% | 2017-04-30 | 2017-05-04 | 5d |  |  |  | 8h | 8h |
| 110 | 5.25.1 | 参考Lire其他的特征类，调研学习继承LireFeature接口的CNN类的具体方法如何写 | manual | 5d | 2017-04-30 A | 2017-05-04 A |  | 100% | 2017-04-30 | 2017-05-04 | 5d |  |  | 黄飞 [5%]; 刘少凡 [5%] | 4h | 4h |
| 111 | 5.25.2 | 调研Caffe框架配置和CNN模型 | manual | 5d | 2017-04-30 A | 2017-05-04 A |  | 100% | 2017-04-30 | 2017-05-04 | 5d |  |  | 宋昱材 [5%] | 2h | 2h |
| 112 | 5.25.3 | 学习Java界面编写 | manual | 5d | 2017-04-30 A | 2017-05-04 A |  | 100% | 2017-04-30 | 2017-05-04 | 5d |  |  | 吴沂楠 [5%] | 2h | 2h |
| 113 | 5.26 | 开会 | manual | 1d | 2017-04-15 | 2017-04-15 |  |  | 2017-05-06 | 2017-05-06 | 1d |  |  | 黄飞 [13%]; 刘少凡 [13%]; 宋昱材 [13%]; 吴沂楠 [13%] | 4.16h |  |
| 114 | 5.27 | 测试与完善 | manual | 1d | 2017-04-15 | 2017-04-15 |  |  | 2017-05-07 | 2017-05-11 | 5d |  |  | 黄飞 [8%]; 宋昱材 [8%] | 1.28h |  |
| 115 | 5.28 | 更新说明书 | manual | 1d | 2017-04-15 | 2017-04-15 |  |  | 2017-05-07 | 2017-05-11 | 5d |  |  | 刘少凡 [5%]; 吴沂楠 [5%] | 0.8h |  |
| 116 | 5.29 | 更新会议记录 | manual | 1d | 2017-04-16 | 2017-04-16 | 113 |  | 2017-05-12 | 2017-05-12 | 1d |  |  | 吴沂楠 [13%] | 1.04h |  |
| 117 | 5.30 | 制作PPT | manual | 1d | 2017-04-15 | 2017-04-15 |  |  | 2017-05-12 | 2017-05-12 | 1d |  |  | 黄飞 [25%] | 2h |  |
| 118 | 5.31 | 课上展示以及问题交流 | manual | 1d | 2017-04-15 | 2017-04-15 |  |  | 2017-05-12 | 2017-05-12 | 1d |  |  | 黄飞 [13%]; 刘少凡 [13%]; 宋昱材 [13%]; 吴沂楠 [13%] | 4.16h |  |
| 119 | 5.32 | <新任务> | manual | 1d? | 2017-04-15 | 2017-04-15 |  |  | 2017-04-15 | 2017-04-15 | 0d? |  |  |  |  |  |
| 120 | 6 | **软件测试分析** |  | 7d | 2017-05-13 | 2017-05-19 |  |  | 2017-05-13 | 2017-05-19 | 7d | 2017-05-13 | 2017-05-19 |  | 19.68h |  |
| 121 | 6.1 | 开会 | manual | 1d | 2017-05-13 | 2017-05-13 |  |  | 2017-05-13 | 2017-05-13 | 1d |  |  | 黄飞 [13%]; 刘少凡 [13%]; 宋昱材 [13%]; 吴沂楠 [13%] | 4.16h |  |
| 122 | 6.2 | 学习 | manual | 1d | 2017-05-13 | 2017-05-13 |  |  | 2017-05-14 | 2017-05-18 | 5d |  |  | 黄飞 [4%]; 刘少凡 [4%]; 宋昱材 [4%]; 吴沂楠 [4%] | 1.28h |  |
| 123 | 6.3 | 测试方案 | manual | 1d | 2017-05-13 | 2017-05-13 |  |  | 2017-05-14 | 2017-05-15 | 2d |  |  | 刘少凡 [19%]; 宋昱材 [19%] | 3.04h |  |
| 124 | 6.4 | 测试 | manual | 1d | 2017-05-14 | 2017-05-14 | 123 |  | 2017-05-16 | 2017-05-17 | 2d |  |  | 吴沂楠 [25%] | 2h |  |
| 125 | 6.5 | 测试结果 | manual | 1d | 2017-05-15 | 2017-05-15 | 124 |  | 2017-05-18 | 2017-05-19 | 2d |  |  | 黄飞 [25%] | 2h |  |
| 126 | 6.6 | 更新会议记录 | manual | 1d | 2017-05-14 | 2017-05-14 | 121 |  | 2017-05-19 | 2017-05-19 | 1d |  |  | 吴沂楠 [13%] | 1.04h |  |
| 127 | 6.7 | 制作PPT | manual | 1d | 2017-05-13 | 2017-05-13 |  |  | 2017-05-19 | 2017-05-19 | 1d |  |  | 刘少凡 [25%] | 2h |  |
| 128 | 6.8 | 课上展示以及问题交流 | manual | 1d | 2017-05-13 | 2017-05-13 |  |  | 2017-05-19 | 2017-05-19 | 1d |  |  | 黄飞 [13%]; 刘少凡 [13%]; 宋昱材 [13%]; 吴沂楠 [13%] | 4.16h |  |
| 129 | 6.9 | <新任务> | manual | 1d? | 2017-05-13 | 2017-05-13 |  |  | 2017-05-13 | 2017-05-13 | 0d |  |  |  |  |  |
| 130 | 7 | **软件测试评审** |  | 7d | 2017-05-20 | 2017-05-26 |  |  | 2017-05-20 | 2017-05-26 | 7d | 2017-05-20 | 2017-05-26 |  | 21.12h |  |
| 131 | 7.1 | 开会 | manual | 1d | 2017-05-20 | 2017-05-20 |  |  | 2017-05-20 | 2017-05-20 | 1d |  |  | 黄飞 [13%]; 刘少凡 [13%]; 宋昱材 [13%]; 吴沂楠 [13%] | 4.16h |  |
| 132 | 7.2 | 评审 | manual | 1d | 2017-05-20 | 2017-05-20 |  |  | 2017-05-21 | 2017-05-22 | 2d |  |  | 黄飞 [19%]; 刘少凡 [19%]; 宋昱材 [19%]; 吴沂楠 [19%] | 6.08h |  |
| 133 | 7.3 | 修改 | manual | 1d | 2017-05-21 | 2017-05-21 | 132 |  | 2017-05-23 | 2017-05-25 | 3d |  |  | 黄飞 [17%]; 刘少凡 [17%] | 2.72h |  |
| 134 | 7.4 | 更新会议记录 | manual | 1d | 2017-05-21 | 2017-05-21 | 131 |  | 2017-05-26 | 2017-05-26 | 1d |  |  | 吴沂楠 [25%] | 2h |  |
| 135 | 7.5 | 制作PPT | manual | 1d | 2017-05-20 | 2017-05-20 |  |  | 2017-05-26 | 2017-05-26 | 1d |  |  | 黄飞 [25%] | 2h |  |
| 136 | 7.6 | 课上展示以及问题交流 | manual | 1d | 2017-05-20 | 2017-05-20 |  |  | 2017-05-26 | 2017-05-26 | 1d |  |  | 黄飞 [13%]; 刘少凡 [13%]; 宋昱材 [13%]; 吴沂楠 [13%] | 4.16h |  |
| 137 | 7.7 | <新任务> | manual | 1d? | 2017-05-20 | 2017-05-20 |  |  | 2017-05-20 | 2017-05-20 | 0d? |  |  |  |  |  |

| ID | WBS | Task | Type | Duration | Start | Finish | Predecessors | Baseline start | Baseline finish | Baseline duration | Baseline 1 start | Baseline 1 finish | Resources | Work |
| --- | --- | --- | --- | --- | --- | --- | --- | --- | --- | --- | --- | --- | --- | --- |
| 138 | 8 | **软件测试复评审** |  | 7d | 2017-05-27 | 2017-06-02 |  | 2017-05-27 | 2017-06-02 | 7d | 2017-05-27 | 2017-06-02 |  | 21.12h |
| 139 | 8.1 | 开会 | manual | 1d | 2017-05-27 | 2017-05-27 |  | 2017-05-27 | 2017-05-27 | 1d |  |  | 黄飞 [13%]; 刘少凡 [13%]; 宋昱材 [13%]; 吴沂楠 [13%] | 4.16h |
| 140 | 8.2 | 复评审 | manual | 1d | 2017-05-27 | 2017-05-27 |  | 2017-05-28 | 2017-05-29 | 2d |  |  | 黄飞 [19%]; 刘少凡 [19%]; 宋昱材 [19%]; 吴沂楠 [19%] | 6.08h |
| 141 | 8.3 | 修改 | manual | 1d | 2017-05-28 | 2017-05-28 | 140 | 2017-05-30 | 2017-06-01 | 3d |  |  | 宋昱材 [17%]; 吴沂楠 [17%] | 2.72h |
| 142 | 8.4 | 更新会议记录 | manual | 1d | 2017-05-28 | 2017-05-28 | 139 | 2017-06-02 | 2017-06-02 | 1d |  |  | 吴沂楠 [25%] | 2h |
| 143 | 8.5 | 制作PPT | manual | 1d | 2017-05-27 | 2017-05-27 |  | 2017-06-02 | 2017-06-02 | 1d |  |  | 刘少凡 [25%] | 2h |
| 144 | 8.6 | 课上展示以及问题交流 | manual | 1d | 2017-05-27 | 2017-05-27 |  | 2017-06-02 | 2017-06-02 | 1d |  |  | 黄飞 [13%]; 刘少凡 [13%]; 宋昱材 [13%]; 吴沂楠 [13%] | 4.16h |
| 145 | 8.7 | <新任务> | manual | 1d? | 2017-05-27 | 2017-05-27 |  | 2017-05-27 | 2017-05-27 | 0d |  |  |  |  |
| 146 | 9 | **软件演示与测评** |  | 7d | 2017-06-03 | 2017-06-09 |  | 2017-06-03 | 2017-06-09 | 7d | 2017-06-03 | 2017-06-09 |  | 18.4h |
| 147 | 9.1 | 开会 | manual | 1d | 2017-06-03 | 2017-06-03 |  | 2017-06-03 | 2017-06-03 | 1d |  |  | 黄飞 [13%]; 刘少凡 [13%]; 宋昱材 [13%]; 吴沂楠 [13%] | 4.16h |
| 148 | 9.2 | 演示与测评 | manual | 1d | 2017-06-03 | 2017-06-03 |  | 2017-06-04 | 2017-06-08 | 5d |  |  | 黄飞 [19%]; 刘少凡 [19%]; 宋昱材 [19%]; 吴沂楠 [19%] | 6.08h |
| 149 | 9.3 | 更新会议记录 | manual | 1d | 2017-06-04 | 2017-06-04 | 147 | 2017-06-09 | 2017-06-09 | 1d |  |  | 吴沂楠 [25%] | 2h |
| 150 | 9.4 | 制作PPT | manual | 1d | 2017-06-03 | 2017-06-03 |  | 2017-06-09 | 2017-06-09 | 1d |  |  | 黄飞 [25%] | 2h |
| 151 | 9.5 | 课上展示以及问题交流 | manual | 1d | 2017-06-03 | 2017-06-03 |  | 2017-06-09 | 2017-06-09 | 1d |  |  | 黄飞 [13%]; 刘少凡 [13%]; 宋昱材 [13%]; 吴沂楠 [13%] | 4.16h |
| 152 | 9.6 | <新任务> | manual | 1d? | 2017-06-03 | 2017-06-03 |  | 2017-06-03 | 2017-06-03 | 0d? |  |  |  |  |
| 153 | 10 | **综合实验分析与总结** |  | 14d | 2017-06-10 | 2017-06-23 |  | 2017-06-10 | 2017-06-23 | 14d | 2017-06-10 | 2017-06-23 |  | 36.8h |
| 154 | 10.1 | 开会 | manual | 1d | 2017-06-10 | 2017-06-10 |  | 2017-06-10 | 2017-06-10 | 1d |  |  | 黄飞 [13%]; 刘少凡 [13%]; 宋昱材 [13%]; 吴沂楠 [13%] | 4.16h |
| 155 | 10.2 | 修改完善所有文档 | manual | 1d | 2017-06-10 | 2017-06-10 |  | 2017-06-11 | 2017-06-15 | 5d |  |  | 黄飞 [19%]; 刘少凡 [19%]; 宋昱材 [19%]; 吴沂楠 [19%] | 6.08h |
| 156 | 10.3 | 更新会议记录 | manual | 1d | 2017-06-11 | 2017-06-11 | 154 | 2017-06-16 | 2017-06-16 | 1d |  |  | 吴沂楠 [25%] | 2h |
| 157 | 10.4 | 制作PPT | manual | 1d | 2017-06-10 | 2017-06-10 |  | 2017-06-16 | 2017-06-16 | 1d |  |  | 刘少凡 [25%] | 2h |
| 158 | 10.5 | 课上展示以及问题交流 | manual | 1d | 2017-06-10 | 2017-06-10 |  | 2017-06-16 | 2017-06-16 | 1d |  |  | 黄飞 [13%]; 刘少凡 [13%]; 宋昱材 [13%]; 吴沂楠 [13%] | 4.16h |
| 159 | 10.6 | 开会 | manual | 1d | 2017-06-10 | 2017-06-10 |  | 2017-06-17 | 2017-06-17 | 1d |  |  | 黄飞 [13%]; 刘少凡 [13%]; 宋昱材 [13%]; 吴沂楠 [13%] | 4.16h |
| 160 | 10.7 | 整理总结分析 | manual | 1d | 2017-06-10 | 2017-06-10 |  | 2017-06-18 | 2017-06-22 | 5d |  |  | 黄飞 [19%]; 刘少凡 [19%]; 宋昱材 [19%]; 吴沂楠 [19%] | 6.08h |
| 161 | 10.8 | 更新会议记录 | manual | 1d | 2017-06-11 | 2017-06-11 | 159 | 2017-06-23 | 2017-06-23 | 1d |  |  | 吴沂楠 [25%] | 2h |
| 162 | 10.9 | 制作PPT | manual | 1d | 2017-06-10 | 2017-06-10 |  | 2017-06-23 | 2017-06-23 | 1d |  |  | 黄飞 [25%] | 2h |
| 163 | 10.10 | 课上展示以及问题交流 | manual | 1d | 2017-06-10 | 2017-06-10 |  | 2017-06-23 | 2017-06-23 | 1d |  |  | 黄飞 [13%]; 刘少凡 [13%]; 宋昱材 [13%]; 吴沂楠 [13%] | 4.16h |
| 164 | 10.11 | <新任务> | manual | 1d? | 2017-06-10 | 2017-06-10 |  | 2017-06-10 | 2017-06-10 | 0d |  |  |  |  |

| ID | WBS | Task | Type | Duration | Start | Finish | Predecessors | Complete | Remaining | Baseline start | Baseline finish | Baseline duration | Baseline 1 start | Baseline 1 finish | Total slack | Resources | Work | Actual work |
| --- | --- | --- | --- | --- | --- | --- | --- | --- | --- | --- | --- | --- | --- | --- | --- | --- | --- | --- |
| 165 | 11 | **实验6：软件项目管理** |  | 53d | 2017-03-14 A | 2017-05-05 |  | 65% | 18.33d | 2017-03-11 | 2017-06-23 | 105d | 2017-03-11 | 2017-06-23 | 0d |  | 22.8h | 15.52h |
| 166 | 11.1 | 制作项目计划mpp | manual | 3d | 2017-03-14 A | 2017-03-16 A | 2, 4 | 100% |  | 2017-03-14 | 2017-03-16 | 3d | 2017-03-14 | 2017-03-16 |  | 刘少凡 [8%] | 1.92h | 1.92h |
| 167 | 11.2 | 更新项目计划文档2.0 | manual | 0.11d | 2017-03-24 A | 2017-03-24 A |  | 100% |  | 2017-03-24 | 2017-03-24 | 1d | 2017-03-24 | 2017-03-24 |  | 刘少凡 [6%] | 0.48h | 0.48h |
| 168 | 11.3 | 更新项目计划文档3.0 | manual | 0.96d | 2017-03-31 A | 2017-03-31 A |  | 100% |  | 2017-03-31 | 2017-03-31 | 1d | 2017-03-31 | 2017-03-31 |  | 刘少凡 [6%] | 0.48h | 0.48h |
| 169 | 11.4 | 更新项目计划文档4.0 | manual | 0.06d | 2017-04-07 A | 2017-04-07 A |  | 100% |  | 2017-04-07 | 2017-04-07 | 1d | 2017-04-07 | 2017-04-07 |  | 刘少凡 [6%] | 0.48h | 0.48h |
| 170 | 11.5 | 更新项目计划文档5.0 | manual | 4d | 2017-04-10 A | 2017-04-13 A |  | 100% |  | 2017-04-10 | 2017-04-14 | 5d |  |  |  | 刘少凡 [6%] | 1.92h | 1.92h |
| 171 | 11.6 | 更新项目计划文档6.0 | manual | 5d | 2017-04-17 A | 2017-04-21 A |  | 100% |  | 2017-04-17 | 2017-04-21 | 5d |  |  |  | 刘少凡 [13%] | 5.2h | 5.2h |
| 172 | 11.7 | 更新项目计划文档7.0 | manual | 1d | 2017-04-28 A | 2017-04-28 A |  | 100% |  | 2017-04-28 | 2017-04-28 | 1d |  |  |  | 刘少凡 [25%] | 2h | 2h |
| 173 | 11.8 | 更新项目计划文档8.0 | manual | 1d | 2017-05-05 A | 2017-05-05 A |  | 100% |  | 2017-05-05 | 2017-05-05 | 1d |  |  |  | 刘少凡 [38%] | 3.04h | 3.04h |
| 174 | 11.9 | 更新项目计划文档9.0 | manual | 1d | 2017-03-14 | 2017-03-14 |  |  |  | 2017-05-12 | 2017-05-12 | 1d |  |  |  | 刘少凡 [13%] | 1.04h |  |
| 175 | 11.10 | 更新项目计划文档10.0 | manual | 1d | 2017-03-14 | 2017-03-14 |  |  |  | 2017-05-19 | 2017-05-19 | 1d |  |  |  | 刘少凡 [13%] | 1.04h |  |
| 176 | 11.11 | 更新项目计划文档11.0 | manual | 1d | 2017-03-14 | 2017-03-14 |  |  |  | 2017-05-26 | 2017-05-26 | 1d |  |  |  | 刘少凡 [13%] | 1.04h |  |
| 177 | 11.12 | 更新项目计划文档12.0 | manual | 1d | 2017-03-14 | 2017-03-14 |  |  |  | 2017-06-02 | 2017-06-02 | 1d |  |  |  | 刘少凡 [13%] | 1.04h |  |
| 178 | 11.13 | 更新项目计划文档13.0 | manual | 1d | 2017-03-14 | 2017-03-14 |  |  |  | 2017-06-09 | 2017-06-09 | 1d |  |  |  | 刘少凡 [13%] | 1.04h |  |
| 179 | 11.14 | 更新项目计划文档14.0 | manual | 1d | 2017-03-14 | 2017-03-14 |  |  |  | 2017-06-16 | 2017-06-16 | 1d |  |  |  | 刘少凡 [13%] | 1.04h |  |
| 180 | 11.15 | 更新项目计划文档15.0 | manual | 1d | 2017-03-14 | 2017-03-14 |  |  |  | 2017-06-23 | 2017-06-23 | 1d |  |  |  | 刘少凡 [13%] | 1.04h |  |
| 181 | 11.16 | <新任务> | manual | 1d? | 2017-03-14 | 2017-03-14 |  |  |  | 2017-03-14 | 2017-03-14 | 0d? |  |  |  |  |  |  |
| 182 | 12 | **实验7：配置管理** |  | 48d | 2017-03-19 A | 2017-05-05 |  | 61% | 18.54d | 2017-03-11 | 2017-06-23 | 105d | 2017-03-11 | 2017-06-23 | 0d |  | 16.4h | 9.12h |
| 183 | 12.1 | 制作第2周相关的配置管理总结文档 | manual | 0.52d | 2017-03-19 A | 2017-03-19 A | 18 | 100% |  | 2017-03-19 | 2017-03-19 | 1d | 2017-03-19 | 2017-03-19 |  | 刘少凡 [13%] | 1.04h | 1.04h |
| 184 | 12.2 | 更新配置管理总结2.0 | manual | 0.16d | 2017-03-24 A | 2017-03-24 A |  | 100% |  | 2017-03-24 | 2017-03-24 | 1d | 2017-03-24 | 2017-03-24 |  | 刘少凡 [3%] | 0.24h | 0.24h |
| 185 | 12.3 | 更新配置管理总结3.0 | manual | 1d | 2017-03-31 A | 2017-03-31 A |  | 100% |  | 2017-03-31 | 2017-03-31 | 1d | 2017-03-31 | 2017-03-31 |  | 刘少凡 [3%] | 0.24h | 0.24h |
| 186 | 12.4 | 更新配置管理总结4.0 | manual | 0.03d | 2017-04-07 A | 2017-04-07 A |  | 100% |  | 2017-04-07 | 2017-04-07 | 1d | 2017-04-07 | 2017-04-07 |  | 刘少凡 [3%] | 0.24h | 0.24h |
| 187 | 12.5 | 更新配置管理总结5.0 | manual | 4d | 2017-04-10 A | 2017-04-13 A |  | 100% |  | 2017-04-10 | 2017-04-14 | 5d |  |  |  | 吴沂楠 [3%]; 刘少凡 [2%] | 1.6h | 1.6h |
| 188 | 12.6 | 更新配置管理总结6.0 | manual | 5d | 2017-04-16 A | 2017-04-20 A |  | 100% |  | 2017-04-16 | 2017-04-20 | 5d |  |  |  | 吴沂楠 [8%] | 3.2h | 3.2h |
| 189 | 12.7 | 更新配置管理总结7.0 | manual | 1d | 2017-04-28 A | 2017-04-28 A |  | 100% |  | 2017-04-28 | 2017-04-28 | 1d |  |  |  | 吴沂楠 [13%]; 刘少凡 [6%] | 1.52h | 1.52h |
| 190 | 12.8 | 更新配置管理总结8.0 | manual | 1d | 2017-05-05 A | 2017-05-05 A |  | 100% |  | 2017-05-05 | 2017-05-05 | 1d |  |  |  | 吴沂楠 [13%] | 1.04h | 1.04h |
| 191 | 12.9 | 更新配置管理总结9.0 | manual | 1d | 2017-03-19 | 2017-03-19 |  |  |  | 2017-05-12 | 2017-05-12 | 1d |  |  |  | 吴沂楠 [13%] | 1.04h |  |
| 192 | 12.10 | 更新配置管理总结10.0 | manual | 1d | 2017-03-19 | 2017-03-19 |  |  |  | 2017-05-19 | 2017-05-19 | 1d |  |  |  | 吴沂楠 [13%] | 1.04h |  |
| 193 | 12.11 | 更新配置管理总结11.0 | manual | 1d | 2017-03-19 | 2017-03-19 |  |  |  | 2017-05-26 | 2017-05-26 | 1d |  |  |  | 吴沂楠 [13%] | 1.04h |  |
| 194 | 12.12 | 更新配置管理总结12.0 | manual | 1d | 2017-03-19 | 2017-03-19 |  |  |  | 2017-06-02 | 2017-06-02 | 1d |  |  |  | 吴沂楠 [13%] | 1.04h |  |
| 195 | 12.13 | 更新配置管理总结13.0 | manual | 1d | 2017-03-19 | 2017-03-19 |  |  |  | 2017-06-09 | 2017-06-09 | 1d |  |  |  | 吴沂楠 [13%] | 1.04h |  |
| 196 | 12.14 | 更新配置管理总结14.0 | manual | 1d | 2017-03-19 | 2017-03-19 |  |  |  | 2017-06-16 | 2017-06-16 | 1d |  |  |  | 吴沂楠 [13%] | 1.04h |  |
| 197 | 12.15 | 更新配置管理总结15.0 | manual | 1d | 2017-03-19 | 2017-03-19 |  |  |  | 2017-06-23 | 2017-06-23 | 1d |  |  |  | 吴沂楠 [13%] | 1.04h |  |
| 198 | 12.16 | <新任务> | manual | 1d? | 2017-03-19 | 2017-03-19 |  |  |  | 2017-03-19 | 2017-03-19 | 0d? |  |  |  |  |  |  |

| ID | WBS | Task | Type | Duration | Start | Finish | Predecessors | Complete | Remaining | Baseline start | Baseline finish | Baseline duration | Baseline 1 start | Baseline 1 finish | Total slack | Resources | Work | Actual work |
| --- | --- | --- | --- | --- | --- | --- | --- | --- | --- | --- | --- | --- | --- | --- | --- | --- | --- | --- |
| 199 | 13 | **实验8：工作量估计与统计** |  | 48d | 2017-03-19 A | 2017-05-05 |  | 65% | 16.64d | 2017-03-11 | 2017-06-23 | 105d | 2017-03-11 | 2017-06-23 | 0d |  | 29.6h | 15.6h |
| 200 | 13.1 | 制作第2周相关的工作量统计分析文档 | manual | 1d | 2017-03-19 A | 2017-03-19 A | 18 | 100% |  | 2017-03-19 | 2017-03-19 | 1d | 2017-03-19 | 2017-03-19 |  | 刘少凡 [13%] | 1.04h | 1.04h |
| 201 | 13.2 | 更新工作量统计分析2.0 | manual | 0.15d | 2017-03-24 A | 2017-03-24 A |  | 100% |  | 2017-03-24 | 2017-03-24 | 1d | 2017-03-24 | 2017-03-24 |  | 刘少凡 [4%] | 0.32h | 0.32h |
| 202 | 13.3 | 更新工作量统计分析3.0 | manual | 1d | 2017-03-31 A | 2017-03-31 A |  | 100% |  | 2017-03-31 | 2017-03-31 | 1d | 2017-03-31 | 2017-03-31 |  | 刘少凡 [4%] | 0.32h | 0.32h |
| 203 | 13.4 | 更新工作量统计分析4.0 | manual | 0.04d | 2017-04-07 A | 2017-04-07 A |  | 100% |  | 2017-04-07 | 2017-04-07 | 1d | 2017-04-07 | 2017-04-07 |  | 刘少凡 [4%] | 0.32h | 0.32h |
| 204 | 13.5 | 更新工作量统计分析5.0 | manual | 4d | 2017-04-10 A | 2017-04-13 A |  | 100% |  | 2017-04-10 | 2017-04-14 | 5d |  |  |  | 宋昱材 [9%]; 刘少凡 [2%] | 3.52h | 3.52h |
| 205 | 13.6 | 更新工作量统计分析6.0 | manual | 5d | 2017-04-16 A | 2017-04-20 A |  | 100% |  | 2017-04-16 | 2017-04-20 | 5d |  |  |  | 黄飞 [10%] | 4h | 4h |
| 206 | 13.7 | 更新工作量统计分析6.2 | manual | 1d | 2017-04-28 A | 2017-04-28 A |  | 100% |  | 2017-04-28 | 2017-04-28 | 1d |  |  |  | 黄飞 [38%]; 吴沂楠 [13%] | 4.08h | 4.08h |
| 207 | 13.8 | 更新工作量统计分析8.0 | manual | 1d | 2017-05-05 A | 2017-05-05 A |  | 100% |  | 2017-05-05 | 2017-05-05 | 1d |  |  |  | 黄飞 [25%] | 2h | 2h |
| 208 | 13.9 | 更新工作量统计分析9.0 | manual | 1d | 2017-03-19 | 2017-03-19 |  |  |  | 2017-05-12 | 2017-05-12 | 1d |  |  |  | 黄飞 [25%] | 2h |  |
| 209 | 13.10 | 更新工作量统计分析10.0 | manual | 1d | 2017-03-19 | 2017-03-19 |  |  |  | 2017-05-19 | 2017-05-19 | 1d |  |  |  | 黄飞 [25%] | 2h |  |
| 210 | 13.11 | 更新工作量统计分析11.0 | manual | 1d | 2017-03-19 | 2017-03-19 |  |  |  | 2017-05-26 | 2017-05-26 | 1d |  |  |  | 黄飞 [25%] | 2h |  |
| 211 | 13.12 | 更新工作量统计分析12.0 | manual | 1d | 2017-03-19 | 2017-03-19 |  |  |  | 2017-06-02 | 2017-06-02 | 1d |  |  |  | 黄飞 [25%] | 2h |  |
| 212 | 13.13 | 更新工作量统计分析13.0 | manual | 1d | 2017-03-19 | 2017-03-19 |  |  |  | 2017-06-09 | 2017-06-09 | 1d |  |  |  | 黄飞 [25%] | 2h |  |
| 213 | 13.14 | 更新工作量统计分析14.0 | manual | 1d | 2017-03-19 | 2017-03-19 |  |  |  | 2017-06-16 | 2017-06-16 | 1d |  |  |  | 黄飞 [25%] | 2h |  |
| 214 | 13.15 | 更新工作量统计分析15.0 | manual | 1d | 2017-03-19 | 2017-03-19 |  |  |  | 2017-06-23 | 2017-06-23 | 1d |  |  |  | 黄飞 [25%] | 2h |  |
